# Gantt EPSA

Schedule from GanttProject, 2019-06-27 to 2020-09-30, baseline: 15_05_2019.
EPSA

## Calendars

- Project calendar: Mon-Sun working.

## Resources

| Resource |
| --- |
| MJT |
| ARZ |
| TLS |
| PTN |
| CMI |
| NGO |
| MRI |
| TMN |
| PTS |
| ASE |
| IGH |
| EBA |
| GLD |
| CAD |
| MKI |
| MSO |
| PAX |
| ADT |
| JMN |
| VDA |
| PCK |
| CLS |
| RMN |
| BMA |

## Schedule

| ID | WBS | Task | Type | Duration | Start | Finish | Predecessors | Baseline start | Baseline finish | Baseline duration | Resources |
| --- | --- | --- | --- | --- | --- | --- | --- | --- | --- | --- | --- |
| 1 | 1 | **Tops** |  | 363d | 2019-06-27 | 2020-06-23 |  | 2019-04-03 | 2020-02-16 | 320d |  |
| 2 | 1.1 | Top Appro | milestone | 0d | 2019-06-27 | 2019-06-27 |  | 2019-06-27 | 2019-06-27 | 0d |  |
| 3 | 1.2 | Top Saison | milestone | 0d | 2019-09-30 | 2019-09-30 |  | 2019-09-30 | 2019-09-30 | 0d |  |
| 4 | 1.3 | Top Synthèse | milestone | 0d | 2019-10-02 | 2019-10-02 |  | 2019-10-02 | 2019-10-02 | 0d |  |
| 5 | 1.4 | Top Copeau 1 | milestone | 0d | 2019-11-06 | 2019-11-06 |  | 2019-11-06 | 2019-11-06 | 0d |  |
| 6 | 1.5 | Top Copeau 2 | milestone | 0d | 2019-11-20 | 2019-11-20 |  | 2019-11-20 | 2019-11-20 | 0d |  |
| 7 | 1.6 | Top Organe | milestone | 0d | 2020-02-05 | 2020-02-05 |  | 2020-02-05 | 2020-02-05 | 0d |  |
| 8 | 1.7 | Top Véhicule | milestone | 0d | 2020-02-19 | 2020-02-19 |  | 2020-02-19 | 2020-02-19 | 0d |  |
| 9 | 1.8 | Top Moteur | milestone | 0d | 2020-03-04 | 2020-03-04 |  | 2020-03-04 | 2020-03-04 | 0d |  |
| 10 | 1.9 | Top Qualif | milestone | 0d | 2020-03-17 | 2020-03-17 |  | 2020-03-17 | 2020-03-17 | 0d |  |
| 11 | 1.10 | Top Compet | milestone | 0d | 2020-06-24 | 2020-06-24 |  | 2020-06-24 | 2020-06-24 | 0d |  |
| 12 | 2 | **Vacances ECL** |  | 127d | 2019-10-26 | 2020-02-29 |  |  |  |  |  |
| 13 | 2.1 | Toussaint |  | 10d | 2019-10-26 | 2019-11-04 |  |  |  |  |  |
| 14 | 2.2 | Noel |  | 17d | 2019-12-21 | 2020-01-06 |  |  |  |  |  |
| 15 | 2.3 | Hivers |  | 1d | 2020-02-29 | 2020-02-29 |  |  |  |  |  |
| 16 | 3 | **Vacances partenaires** |  | 99d | 2020-06-24 | 2020-09-30 |  |  |  |  |  |
| 17 | 3.1 | Giraudière |  | 99d | 2020-06-24 | 2020-09-30 |  |  |  |  |  |
| 18 | 3.2 | Boisard |  | 99d | 2020-06-24 | 2020-09-30 |  |  |  |  |  |
| 19 | 4 | **Global** |  | 363d | 2019-06-27 | 2020-06-23 |  |  |  |  |  |
| 20 | 4.1 | Livrables |  | 363d | 2019-06-27 | 2020-06-23 | 2, 11FF | 2019-05-08 | 2019-05-27 | 20d |  |
| 21 | 4.2 | Carnet de conception |  | 51d | 2019-07-01 | 2019-08-20 |  |  |  |  | TLS |
| 22 | 4.3 | Nomenclature |  | 38d | 2019-07-18 | 2019-08-24 |  |  |  |  | TLS |
| 23 | 5 | **LAS** |  | 98d | 2019-08-19 | 2019-11-24 |  | 2019-05-08 | 2019-05-22 | 15d |  |
| 24 | 5.1 | **Cinématique** |  | 70d | 2019-08-19 | 2019-10-27 |  |  |  |  |  |
| 25 | 5.1.1 | Points de LAS avant |  | 14d | 2019-08-19 | 2019-09-01 |  |  |  |  | MKI; PAX |
| 26 | 5.1.2 | Points de LAS arrière |  | 21d | 2019-08-26 | 2019-09-15 |  |  |  |  | MKI; PAX |
| 27 | 5.1.3 | Géométrie de suspension |  | 35d | 2019-08-26 | 2019-09-29 |  |  |  |  | PAX |
| 28 | 5.1.4 | Géométrie d'anti-roulis |  | 14d | 2019-09-16 | 2019-09-29 |  |  |  |  | PAX |
| 29 | 5.1.5 | Seconde itération |  | 28d | 2019-09-30 | 2019-10-27 | 25, 26, 27, 28 |  |  |  | MSO; PAX |

| ID | WBS | Task | Duration | Start | Finish | Predecessors | Resources |
| --- | --- | --- | --- | --- | --- | --- | --- |
| 30 | 5.2 | **Cas de charge** | 66d | 2019-09-02 | 2019-11-06 |  |  |
| 31 | 5.2.1 | Logiciel? | 4d | 2019-09-02 | 2019-09-05 |  | MKI |
| 32 | 5.2.2 | Paul Clauzel | 3d | 2019-09-06 | 2019-09-08 | 31 | MKI |
| 33 | 5.2.3 | LAS Auto | 14d | 2019-09-09 | 2019-09-22 | 32 | MKI |
| 34 | 5.2.4 | Modèle | 7d | 2019-09-23 | 2019-09-29 | 33 | MKI |
| 35 | 5.2.5 | Cas de charge | 14d | 2019-09-30 | 2019-10-13 | 34 | MKI |
| 36 | 5.2.6 | Vérification | 7d | 2019-10-14 | 2019-10-20 | 35 | MKI |
| 37 | 5.2.7 | Itérations | 7d | 2019-10-21 | 2019-10-27 | 36 | MKI |
| 38 | 5.2.8 | Fin des cas de charges | 10d | 2019-10-28 | 2019-11-06 | 37 | MKI |
| 39 | 5.3 | **Roue équipée** | 82d | 2019-08-19 | 2019-11-08 |  |  |
| 40 | 5.3.1 | Choix des pneus | 12d | 2019-08-19 | 2019-08-30 | 25SS | MKI; MSO |
| 41 | 5.3.2 | Architecture | 7d | 2019-09-02 | 2019-09-08 |  | MSO |
| 42 | 5.3.3 | Modifications | 7d | 2019-09-09 | 2019-09-15 | 41 | MSO |
| 43 | 5.3.4 | Frette de frein | 7d | 2019-09-16 | 2019-09-22 | 42 | MSO |
| 44 | 5.3.5 | Ebauche CATIA | 14d | 2019-09-23 | 2019-10-06 | 43 | MSO |
| 45 | 5.3.6 | Retour points de LAS | 14d | 2019-09-30 | 2019-10-13 |  | MSO |
| 46 | 5.3.7 | Optimisation | 26d | 2019-10-07 | 2019-11-01 |  | MSO |
| 47 | 5.3.8 | Fabricabilité | 7d | 2019-11-02 | 2019-11-08 | 46 | MSO |
| 48 | 5.4 | **Triangles** | 84d | 2019-09-02 | 2019-11-24 |  |  |
| 49 | 5.4.1 | Choix réglage | 7d | 2019-09-16 | 2019-09-22 |  | PCK |
| 50 | 5.4.2 | Dimensionnement biellettes | 7d | 2019-09-23 | 2019-09-29 | 49 | PCK |
| 51 | 5.4.3 | Dimensionnement visserie | 7d | 2019-09-23 | 2019-09-29 | 49 | PCK |
| 52 | 5.4.4 | Choix rotules | 7d | 2019-09-30 | 2019-10-06 | 51 | PCK |
| 53 | 5.4.5 | Choix entretoises | 7d | 2019-10-07 | 2019-10-13 | 52 | PCK |
| 54 | 5.4.6 | Concertation | 7d | 2019-09-02 | 2019-09-08 |  | PCK |
| 55 | 5.4.7 | Dimenssionnement des tubes | 7d | 2019-10-14 | 2019-10-20 | 35, 54 | PCK |
| 56 | 5.4.8 | Dimensionnement des inserts | 7d | 2019-10-21 | 2019-10-27 | 55 | PCK |
| 57 | 5.4.9 | Essais collages | 28d | 2019-10-28 | 2019-11-24 | 56 | PCK |

Notes:
- 31: Mecamaster ou Optimum Kinematics?
- 32: Le contacter pour la licence Mecamaster
- 33: A préparer
- 35: Premiers cas de charges
- 36: A voir avec Paul Clozel
- 42: Recherche des éléments où il faut investir du temps
- 43: Etudier la faisabilité d'un frette combiné au moyeu
- 49: Voir Claude Rouelle : pas différents de chaque côté des biellettes
- 54: Concertation LAS, Châssis

| ID | WBS | Task | Duration | Start | Finish | Predecessors | Complete | Baseline start | Baseline finish | Baseline duration | Resources |
| --- | --- | --- | --- | --- | --- | --- | --- | --- | --- | --- | --- |
| 58 | 5.5 | **Suspension** | 70d | 2019-08-19 | 2019-10-27 |  |  |  |  |  |  |
| 59 | 5.5.1 | Contacter GTE | 7d | 2019-08-19 | 2019-08-25 | 27SF |  |  |  |  | PAX |
| 60 | 5.5.2 | Pivot | 7d | 2019-09-30 | 2019-10-06 | 27 |  |  |  |  | PCK |
| 61 | 5.5.3 | Basculeurs | 14d | 2019-10-14 | 2019-10-27 |  |  |  |  |  | PCK |
| 62 | 5.6 | **Anti-roulis** | 28d | 2019-09-30 | 2019-10-27 |  |  |  |  |  |  |
| 63 | 5.6.1 | Modèle efforts | 14d | 2019-09-30 | 2019-10-13 | 28 |  |  |  |  | PAX |
| 64 | 5.6.2 | Dimenssionnement de la barre de torsion | 14d | 2019-10-14 | 2019-10-27 | 63 |  |  |  |  | PAX |
| 65 | 5.6.3 | Couteaux | 14d | 2019-09-30 | 2019-10-13 | 28 |  |  |  |  | PAX |
| 66 | 5.6.4 | Pivot | 7d | 2019-10-14 | 2019-10-20 | 65 |  |  |  |  | PAX |
| 67 | 5.6.5 | Coussinets | 7d | 2019-10-21 | 2019-10-27 | 66 |  |  |  |  | PAX |
| 68 | 5.7 | **Direction** | 35d | 2019-09-16 | 2019-10-20 |  |  |  |  |  |  |
| 69 | 5.7.1 | Cardan | 14d | 2019-09-16 | 2019-09-29 |  |  |  |  |  |  |
| 70 | 5.7.2 | Colonne de direction | 7d | 2019-09-30 | 2019-10-06 | 69 |  |  |  |  |  |
| 71 | 5.7.3 | Finalisation cinématique | 7d | 2019-10-07 | 2019-10-13 | 25, 70 |  |  |  |  |  |
| 72 | 5.7.4 | Pivot et manchon | 7d | 2019-10-14 | 2019-10-20 | 71 |  |  |  |  |  |
| 73 | 5.8 | **Freinage** | 21d | 2019-09-16 | 2019-10-06 |  |  |  |  |  |  |
| 74 | 5.8.1 | Répartition freinage | 14d | 2019-09-16 | 2019-09-29 |  |  |  |  |  | ADT |
| 75 | 5.8.2 | Dimenssionnement disques | 14d | 2019-09-23 | 2019-10-06 |  |  |  |  |  | ADT |
| 76 | 5.8.3 | Dimenssionnement étrier | 14d | 2019-09-23 | 2019-10-06 |  |  |  |  |  | ADT |
| 77 | 5.9 | **Pédalier** | 49d | 2019-09-16 | 2019-11-03 |  |  |  |  |  |  |
| 78 | 5.9.1 | Accélérateur | 35d | 2019-09-16 | 2019-10-20 |  |  |  |  |  | JMN |
| 79 | 5.9.2 | Frein | 35d | 2019-09-30 | 2019-11-03 |  |  |  |  |  | JMN |
| 80 | 6 | **Frame** | 100d | 2019-08-12 | 2019-11-19 |  | 2% | 2019-05-08 | 2019-05-18 | 11d |  |
| 81 | 6.1 | **Structure tubulaire** | 98d | 2019-08-12 | 2019-11-17 |  | 4% |  |  |  |  |
| 82 | 6.1.1 | Premières esquisses | 14d | 2019-08-12 | 2019-08-25 |  | 50% |  |  |  | CMI |
| 83 | 6.1.2 | Points de LAS | 21d | 2019-08-26 | 2019-09-15 | 82 |  |  |  |  | CMI |
| 84 | 6.1.3 | Ergonomie | 14d | 2019-08-19 | 2019-09-01 |  |  |  |  |  | CMI |
| 85 | 6.1.4 | Moteur - Echappement | 21d | 2019-09-02 | 2019-09-22 | 84 |  |  |  |  | CMI |
| 86 | 6.1.5 | Finalisation filaire | 14d | 2019-09-16 | 2019-09-29 |  |  |  |  |  | CMI |
| 87 | 6.1.6 | Seconde itération | 14d | 2019-09-30 | 2019-10-13 | 29SS, 86 |  |  |  |  | CMI |
| 88 | 6.1.7 | Diamètres des tubes | 14d | 2019-09-30 | 2019-10-13 | 86 |  |  |  |  | CMI |
| 89 | 6.1.8 | Vérif règlement | 7d | 2019-10-14 | 2019-10-20 | 88 |  |  |  |  | CMI |
| 90 | 6.1.9 | Raideur en torsions | 14d | 2019-10-14 | 2019-10-27 | 88 |  |  |  |  | CMI |
| 91 | 6.1.10 | Autres cas de charge | 14d | 2019-10-21 | 2019-11-03 |  |  |  |  |  | CMI |
| 92 | 6.1.11 | Vérif règlement | 14d | 2019-11-04 | 2019-11-17 | 90, 91 |  |  |  |  | CMI |

Notes:
- 59: Pour la démarche
- 63: Pour la démarche
- 64: Pour la démarche
- 65: Pour la démarche
- 66: Pour la démarche
- 67: Pour la démarche
- 73: En collaboration avec la roue équipée et le pédalier

| ID | WBS | Task | Duration | Start | Finish | Predecessors | Resources |
| --- | --- | --- | --- | --- | --- | --- | --- |
| 93 | 6.2 | **Equipements** | 58d | 2019-09-23 | 2019-11-19 |  |  |
| 94 | 6.2.1 | Chappes paramétrables | 35d | 2019-09-23 | 2019-10-27 |  |  |
| 95 | 6.2.2 | Suivi des chappes | 44d | 2019-10-07 | 2019-11-19 | 6FF | TLS |
| 96 | 6.2.3 | Anti-intrusion plate | 14d | 2019-10-14 | 2019-10-27 | 87 | CMI |
| 97 | 6.2.4 | Pare-feu | 14d | 2019-10-28 | 2019-11-10 | 96 | CMI |
| 98 | 6.2.5 | Fond plat | 14d | 2019-10-14 | 2019-10-27 | 87 | PTS |
| 99 | 7 | **Aéro** | 98d | 2019-08-12 | 2019-11-17 |  |  |
| 100 | 7.1 | **Carrosserie** | 63d | 2019-09-16 | 2019-11-17 |  |  |
| 101 | 7.1.1 | REX et étude concurrence | 14d | 2019-09-16 | 2019-09-29 |  | PTS |
| 102 | 7.1.2 | Premier version | 14d | 2019-09-30 | 2019-10-13 | 86, 101 | PTS |
| 103 | 7.1.3 | Optimisation aéro | 14d | 2019-10-14 | 2019-10-27 | 102 | PTS |
| 104 | 7.1.4 | Seconde itération | 7d | 2019-10-28 | 2019-11-03 | 87, 103 | PTS |
| 105 | 7.1.5 | Fixation aéro | 14d | 2019-11-04 | 2019-11-17 | 104 | PTS |
| 106 | 7.2 | **Méthode numérique** | 21d | 2019-08-19 | 2019-09-08 |  |  |
| 107 | 7.2.1 | Simulation mécanique | 21d | 2019-08-19 | 2019-09-08 |  | NGO |
| 108 | 7.3 | **Process de production** | 28d | 2019-09-02 | 2019-09-29 |  |  |
| 109 | 7.3.1 | Process de production | 28d | 2019-09-02 | 2019-09-29 |  | NGO; MRI; TMN |
| 110 | 7.4 | **Ouies** | 91d | 2019-08-12 | 2019-11-10 |  |  |
| 111 | 7.4.1 | Concept ouies | 21d | 2019-08-12 | 2019-09-01 |  | PTS |
| 112 | 7.4.2 | Positionnement radiateur | 14d | 2019-08-26 | 2019-09-08 |  | PTS |
| 113 | 7.4.3 | Optimisation flux radiateur | 28d | 2019-08-26 | 2019-09-22 | 112SS | PTS |
| 114 | 7.4.4 | Optimisation aéro | 14d | 2019-09-16 | 2019-09-29 |  | PTS |
| 115 | 7.4.5 | Résistance mécanique | 28d | 2019-09-30 | 2019-10-27 | 114 | PTS |
| 116 | 7.4.6 | Détermination d'un process | 28d | 2019-09-30 | 2019-10-27 | 114 | PTS |
| 117 | 7.4.7 | Test du process | 28d | 2019-10-14 | 2019-11-10 |  | PTS |

Notes:
- 114: Après les ailes avant et arrière
- 116: Voir reamrques EPFL / Contacter Alexis Couturier si besoin

| ID | WBS | Task | Duration | Start | Finish | Predecessors | Complete | Baseline start | Baseline finish | Baseline duration | Resources |
| --- | --- | --- | --- | --- | --- | --- | --- | --- | --- | --- | --- |
| 118 | 7.5 | **Aile arrière** | 56d | 2019-09-09 | 2019-11-03 |  |  |  |  |  |  |
| 119 | 7.5.1 | Concept d'attaches | 14d | 2019-09-09 | 2019-09-22 |  |  |  |  |  | TMN |
| 120 | 7.5.2 | Méthode de réglage | 14d | 2019-09-16 | 2019-09-29 |  |  |  |  |  | TMN |
| 121 | 7.5.3 | Modèle d'efforts sur l'aile | 7d | 2019-09-30 | 2019-10-06 | 120 |  |  |  |  | TMN |
| 122 | 7.5.4 | Dessin des inserts | 21d | 2019-10-07 | 2019-10-27 | 109, 121 |  |  |  |  | TMN |
| 123 | 7.5.5 | Simulation mécanique | 28d | 2019-10-07 | 2019-11-03 | 107, 109, 121 |  |  |  |  | TMN |
| 124 | 7.5.6 | Calcul de déflection | 21d | 2019-10-14 | 2019-11-03 |  |  |  |  |  | TMN |
| 125 | 7.6 | **Aile avant** | 63d | 2019-09-02 | 2019-11-03 |  |  |  |  |  |  |
| 126 | 7.6.1 | Simplification de l'aile | 21d | 2019-09-02 | 2019-09-22 |  |  |  |  |  | MRI |
| 127 | 7.6.2 | Concept d'attaches | 14d | 2019-09-09 | 2019-09-22 |  |  |  |  |  | TMN |
| 128 | 7.6.3 | Méthode de réglage | 14d | 2019-09-16 | 2019-09-29 |  |  |  |  |  | TMN |
| 129 | 7.6.4 | Modèle d'efforts sur l'aile | 7d | 2019-09-30 | 2019-10-06 | 128 |  |  |  |  | TMN |
| 130 | 7.6.5 | Dessin des inserts | 21d | 2019-10-07 | 2019-10-27 | 109, 129 |  |  |  |  | TMN |
| 131 | 7.6.6 | Simulation mécanique | 28d | 2019-10-07 | 2019-11-03 | 107, 109, 129 |  |  |  |  | TMN |
| 132 | 7.6.7 | Calcul de déflection | 21d | 2019-10-14 | 2019-11-03 |  |  |  |  |  | TMN |
| 133 | 8 | **Motorisation** | 98d | 2019-08-05 | 2019-11-10 |  | 8% | 2019-05-06 | 2019-05-20 | 15d |  |
| 134 | 8.1 | **Admission** | 56d | 2019-08-12 | 2019-10-06 |  |  |  |  |  |  |
| 135 | 8.1.1 | Contact fournisseur | 14d | 2019-09-02 | 2019-09-15 |  |  |  |  |  | TLS |
| 136 | 8.1.2 | Concept bride guillotine | 21d | 2019-08-12 | 2019-09-01 |  |  |  |  |  | TLS |
| 137 | 8.1.3 | Concept plenum admission | 21d | 2019-08-12 | 2019-09-01 |  |  |  |  |  | TLS |
| 138 | 8.1.4 | Etudes aéro | 28d | 2019-08-19 | 2019-09-15 |  |  |  |  |  | TLS |
| 139 | 8.1.5 | Audit Volvo | 7d | 2019-09-16 | 2019-09-22 | 138 |  |  |  |  | TLS |
| 140 | 8.1.6 | Calcul FEM | 7d | 2019-09-16 | 2019-09-22 | 138 |  |  |  |  | TLS |
| 141 | 8.1.7 | Validation Romain | 14d | 2019-09-23 | 2019-10-06 | 140 |  |  |  |  | TLS |
| 142 | 8.1.8 | Validation académiciens | 14d | 2019-09-23 | 2019-10-06 | 140 |  |  |  |  | TLS |

| ID | WBS | Task | Duration | Start | Finish | Predecessors | Complete | Resources |
| --- | --- | --- | --- | --- | --- | --- | --- | --- |
| 143 | 8.2 | **Echappement** | 56d | 2019-08-12 | 2019-10-06 |  |  |  |
| 144 | 8.2.1 | Contact Bery | 7d | 2019-09-02 | 2019-09-08 |  |  | MJT |
| 145 | 8.2.2 | Concept échappement | 7d | 2019-08-12 | 2019-08-18 |  |  | MJT |
| 146 | 8.2.3 | Volume enveloppe | 14d | 2019-08-19 | 2019-09-01 | 145 |  | MJT |
| 147 | 8.2.4 | CATIA | 21d | 2019-09-02 | 2019-09-22 | 146 |  | MJT |
| 148 | 8.2.5 | Validation Romain | 14d | 2019-09-23 | 2019-10-06 | 147 |  | MJT |
| 149 | 8.2.6 | Validation académiciens | 14d | 2019-09-23 | 2019-10-06 | 147 |  | MJT |
| 150 | 8.3 | **Carto** | 7d | 2019-10-07 | 2019-10-13 |  |  |  |
| 151 | 8.3.1 | Prevoir passage au banc de Givors | 7d | 2019-10-07 | 2019-10-13 | 141, 142, 148, 149 |  | MJT |
| 152 | 8.4 | **Refroidissement** | 35d | 2019-08-05 | 2019-09-08 |  | 60% |  |
| 153 | 8.4.1 | Dimensionnement | 21d | 2019-08-05 | 2019-08-25 |  | 100% | ASE |
| 154 | 8.4.2 | Itération 2 | 14d | 2019-08-26 | 2019-09-08 | 153 |  | ASE |
| 155 | 8.5 | **Circuit d'essence** | 56d | 2019-09-16 | 2019-11-10 |  |  |  |
| 156 | 8.5.1 | Réservoir | 7d | 2019-09-16 | 2019-09-22 |  |  |  |
| 157 | 8.5.2 | Pompe à essence | 14d | 2019-09-23 | 2019-10-06 | 156 |  |  |
| 158 | 8.5.3 | Circuit d'essence | 14d | 2019-10-07 | 2019-10-20 | 157 |  |  |
| 159 | 8.5.4 | Tuyau de remplissage | 14d | 2019-10-07 | 2019-10-20 | 157 |  |  |
| 160 | 8.5.5 | Modèle CATIA | 21d | 2019-10-21 | 2019-11-10 | 158, 159 |  |  |
| 161 | 8.5.6 | Protection thermique | 7d | 2019-10-21 | 2019-10-27 | 156, 157, 158 |  |  |
| 162 | 8.6 | **Transmission secondaire** | 49d | 2019-09-16 | 2019-11-03 |  |  |  |
| 163 | 8.6.1 | Contacter CME et MPY | 7d | 2019-09-16 | 2019-09-22 |  |  |  |
| 164 | 8.6.2 | Piste amélioration | 14d | 2019-09-16 | 2019-09-29 |  |  |  |
| 165 | 8.6.3 | Différentiel | 7d | 2019-09-16 | 2019-09-22 |  |  |  |
| 166 | 8.6.4 | Excentriques | 21d | 2019-09-23 | 2019-10-13 | 165 |  |  |
| 167 | 8.6.5 | Porte-excentriques | 21d | 2019-09-23 | 2019-10-13 | 165 |  |  |
| 168 | 8.6.6 | Rapport de transmission secondaire | 21d | 2019-09-16 | 2019-10-06 |  |  |  |
| 169 | 8.6.7 | Pignon - Couronne | 14d | 2019-09-23 | 2019-10-06 |  |  |  |
| 170 | 8.6.8 | Porte couronne | 14d | 2019-10-07 | 2019-10-20 | 169 |  |  |
| 171 | 8.6.9 | Chainshield | 14d | 2019-10-21 | 2019-11-03 | 170 |  |  |

Notes:
- 154: En lien avec le dessin des ouies de PTS
- 162: Ressources: / ASE et une recrue semble correct et moins risqué que deux recrues. / Une des recrues sera donc affecté au circuit d'essence.
- 170: Discuter avec Bertrand Houx pour usinage à Centrale
- 171: Ne pas lancer la prod, faire un template au fablab d'abord et usiner le crai quand c'est bon

| ID | WBS | Task | Duration | Start | Finish | Predecessors | Baseline start | Baseline finish | Baseline duration | Resources |
| --- | --- | --- | --- | --- | --- | --- | --- | --- | --- | --- |
| 172 | 9 | **SEISM** | 84d | 2019-09-02 | 2019-11-24 |  | 2019-05-10 | 2019-05-14 | 5d |  |
| 173 | 9.1 | **Faisceau** | 84d | 2019-09-02 | 2019-11-24 |  |  |  |  |  |
| 174 | 9.1.1 | Faisceau LV | 21d | 2019-09-02 | 2019-09-22 |  |  |  |  | CLS |
| 175 | 9.1.2 | Acquisition de données | 14d | 2019-09-09 | 2019-09-22 |  |  |  |  | CLS |
| 176 | 9.1.3 | Faisceau HV | 21d | 2019-09-23 | 2019-10-13 | 174 |  |  |  | CLS |
| 177 | 9.1.4 | Batterie | 14d | 2019-09-30 | 2019-10-13 |  |  |  |  | CLS |
| 178 | 9.1.5 | Dimensionnement câble | 14d | 2019-10-07 | 2019-10-20 |  |  |  |  | CLS |
| 179 | 9.1.6 | Placer les boîtes | 14d | 2019-10-14 | 2019-10-27 |  |  |  |  | CLS |
| 180 | 9.1.7 | Contacter Souriaux | 7d | 2019-09-02 | 2019-09-08 |  |  |  |  | CLS |
| 181 | 9.1.8 | Choix connecteur | 14d | 2019-10-14 | 2019-10-27 | 180 |  |  |  | CLS |
| 182 | 9.1.9 | Modèle CATIA | 28d | 2019-10-28 | 2019-11-24 | 179, 181 |  |  |  | CLS |
| 183 | 9.2 | **Passage de rapport** | 70d | 2019-09-02 | 2019-11-10 |  |  |  |  |  |
| 184 | 9.2.1 | Dimensionnement moteur | 28d | 2019-09-02 | 2019-09-29 |  |  |  |  | BMA |
| 185 | 9.2.2 | Dimensionnement réducteur | 28d | 2019-09-02 | 2019-09-29 |  |  |  |  | BMA |
| 186 | 9.2.3 | Reprendre le code | 28d | 2019-09-30 | 2019-10-27 | 184, 185 |  |  |  | BMA |
| 187 | 9.2.4 | Shield | 28d | 2019-10-14 | 2019-11-10 |  |  |  |  | BMA |
| 188 | 9.3 | **Tableau de bord** | 70d | 2019-09-02 | 2019-11-10 |  |  |  |  |  |
| 189 | 9.3.1 | Liste des afficheurs | 14d | 2019-09-02 | 2019-09-15 |  |  |  |  | RMN |
| 190 | 9.3.2 | Commande des afficheurs | 14d | 2019-09-09 | 2019-09-22 |  |  |  |  | RMN |
| 191 | 9.3.3 | Liste des boutons | 14d | 2019-09-16 | 2019-09-29 | 189 |  |  |  | RMN |
| 192 | 9.3.4 | Dessin TdB | 14d | 2019-10-14 | 2019-10-27 | 87, 189, 191 |  |  |  | RMN |
| 193 | 9.3.5 | Code sans CAN | 56d | 2019-09-16 | 2019-11-10 | 189 |  |  |  | RMN |
| 194 | 9.3.6 | Insérer le CAN | 14d | 2019-10-28 | 2019-11-10 | 193FF |  |  |  | RMN |
| 195 | 9.3.7 | Dessin des cartes | 28d | 2019-10-14 | 2019-11-10 | 193FF, 194FF |  |  |  | RMN |

Notes:
- 185: Choisir entre Atomix et Optimus
- 187: Inclure la connection CAN
